# 4E1-Group30-Scenario1

Schedule from MS Project, 2026-10-19 to 2030-10-03, status date 2026-11-11.

## Calendars

- ESB Office Calendar: Mon-Fri 08:00-12:00, 13:00-17:00; Sat-Sun off. Exceptions (off unless hours are given): 2026-10-26 to 2030-10-28 (October Bank Holiday, recurring), 2026-12-25 to 2030-12-25 (Christmas Day, recurring), 2026-12-26 to 2030-12-26 (St.Stephen's Day, recurring), 2026-12-27 to 2030-12-31 (Christmas Holidays, recurring), 2027-01-01 to 2031-01-01 (New Years Day, recurring), 2027-02-01 to 2031-02-01 (Imbolc / St.Bridget's Day, recurring), 2027-03-17 to 2031-03-17 (St Patrick's Day, recurring), 2027-03-29 (Easter Monday 2027), 2027-05-03 to 2030-05-06 (May Bank Holiday, recurring), 2027-06-07 to 2030-06-03 (June Bank Holiday, recurring), 2027-08-02 to 2030-08-05 (August Bank Holiday, recurring), 2028-04-17 (Easter Monday 2028), 2029-04-02 (Easter Monday 2029), 2030-04-22 (Easter Monday 2030).

## Schedule

| ID | WBS | Task | Type | Duration | Start | Finish | Predecessors | Baseline start | Baseline finish | Baseline duration | Total slack | Free slack |
| --- | --- | --- | --- | --- | --- | --- | --- | --- | --- | --- | --- | --- |
| 1 | 1 | **Planning Permission** |  | 380d | 2026-10-19 | 2028-05-03 |  | 2026-10-19 | 2028-05-03 | 380d | 0d |  |
| 2 | 1.1 | Layout Design |  | 10w | 2026-10-19 | 2027-01-05 |  | 2026-10-19 | 2027-01-05 | 10w | 0d |  |
| 3 | 1.2 | County Council Engagement |  | 6w | 2027-01-06 | 2027-02-17 | 2 | 2027-01-06 | 2027-02-17 | 6w | 0d |  |
| 4 | 1.3 | Site Investigation |  | 16w | 2027-02-18 | 2027-06-15 | 3 | 2027-02-18 | 2027-06-15 | 16w | 0d |  |
| 5 | 1.4 | Drainage Design |  | 4w | 2027-06-16 | 2027-07-13 | 4 | 2027-06-16 | 2027-07-13 | 4w | 0d |  |
| 6 | 1.5 | Site Assessments |  | 3w | 2027-06-16 | 2027-07-06 | 4 | 2027-06-16 | 2027-07-06 | 3w | 65d | 35d |
| 7 | 1.6 | Planning Pack Prep |  | 6w | 2027-08-26 | 2027-10-06 | 2, 6, 9 | 2027-08-26 | 2027-10-06 | 6w | 30d |  |
| 8 | 1.7 | Submit Planning | milestone | 0w | 2027-11-18 | 2027-11-18 | 7, 10 | 2027-11-18 | 2027-11-18 | 0w | 0d |  |
| 9 | 1.8 | Drainage Site Survey |  | 6w | 2027-07-14 | 2027-08-25 | 5 | 2027-07-14 | 2027-08-25 | 6w | 30d | 0d |
| 10 | 1.9 | Landowner Consent & Approvals |  | 18w | 2027-07-14 | 2027-11-18 | 5 | 2027-07-14 | 2027-11-18 | 18w | 0d |  |
| 11 | 1.10 | Grant of Planning |  | 22w | 2027-11-19 | 2028-05-03 | 8 | 2027-11-19 | 2028-05-03 | 22w | 25d | 0d |
| 12 | 2 | **Scoping & Costing** |  | 140d | 2027-11-19 | 2028-06-15 |  | 2028-05-04 | 2028-10-06 | 110d | 0d |  |
| 13 | 2.1 | Develop Project Scope |  | 10w | 2027-11-19 | 2028-02-04 | 8 | 2028-05-04 | 2028-07-13 | 10w | 0d |  |
| 14 | 2.2 | Complie Project Costs |  | 6w | 2028-02-07 | 2028-03-20 | 13 | 2028-07-14 | 2028-08-25 | 6w | 55d | 0d |
| 15 | 2.3 | Issue SOW and costs for approval | milestone | 0w | 2028-03-20 | 2028-03-20 | 14 | 2028-08-25 | 2028-08-25 | 0w | 55d | 30d |
| 16 | 2.4 | ESBN Board Approval |  | 6w | 2028-05-04 | 2028-06-15 | 11, 15 | 2028-08-28 | 2028-10-06 | 6w | 25d |  |
| 17 | 3 | **Tendering** |  | 155d | 2028-02-07 | 2028-09-15 |  | 2028-07-14 | 2029-03-28 | 175d | 0d |  |
| 18 | 3.1 | Update Required Specifications |  | 6w | 2028-02-07 | 2028-03-20 | 13 | 2028-07-14 | 2028-08-25 | 6w | 0d |  |
| 19 | 3.2 | Prepare Tender Documents |  | 4w | 2028-02-07 | 2028-03-03 | 13 | 2028-07-14 | 2028-08-11 | 4w | 10d |  |
| 20 | 3.3 | Issue Tender | milestone | 0w | 2028-03-20 | 2028-03-20 | 18, 19 | 2028-10-06 | 2028-10-06 | 0w | 0d |  |
| 21 | 3.4 | Tender Response Period |  | 10w | 2028-03-21 | 2028-05-31 | 20 | 2028-10-09 | 2028-12-18 | 10w | 0d |  |
| 22 | 3.5 | Tender Assessment |  | 5w | 2028-06-01 | 2028-07-06 | 21 | 2028-12-19 | 2029-01-30 | 5w | 0d |  |
| 23 | 3.6 | Tender Award |  | 4w | 2028-07-21 | 2028-08-18 | 24, 16 | 2029-01-31 | 2029-02-28 | 4w | 0d |  |
| 24 | 3.7 | Best and Final Offer |  | 2w | 2028-07-07 | 2028-07-20 | 22, 11 |  |  |  | 0d |  |
| 25 | 3.8 | Contract Commencement |  | 4w | 2028-08-21 | 2028-09-15 | 23 | 2029-03-01 | 2029-03-28 | 4w | 0d |  |

| ID | WBS | Task | Duration | Start | Finish | Predecessors | Baseline start | Baseline finish | Baseline duration | Total slack | Free slack |
| --- | --- | --- | --- | --- | --- | --- | --- | --- | --- | --- | --- |
| 26 | 4 | **Construction** | 510d | 2028-09-18 | 2030-10-03 |  | 2029-03-29 | 2031-04-15 | 510d | 0d |  |
| 27 | 4.1 | Detailed Design | 8w | 2028-09-18 | 2028-11-13 | 25 | 2029-03-29 | 2029-05-25 | 8w | 30d | 0d |
| 28 | 4.2 | Material Order | 4w | 2028-09-18 | 2028-10-13 | 25 | 2029-03-29 | 2029-04-26 | 4w | 0d |  |
| 29 | 4.3 | Material Delivery | 52w | 2028-10-16 | 2029-10-31 | 28 | 2029-04-27 | 2030-05-14 | 52w | 0d |  |
| 30 | 4.4 | Site Set-Up | 4w | 2028-09-18 | 2028-10-13 | 25 | 2029-03-29 | 2029-04-26 | 4w | 50d | 20d |
| 31 | 4.5 | Civil Works | 42w | 2028-11-14 | 2029-09-18 | 27, 30 | 2029-05-28 | 2030-03-29 | 42w | 30d |  |
| 32 | 4.6 | Mechanical &Electrical Works | 30w | 2029-11-01 | 2030-06-12 | 29, 31 | 2030-05-15 | 2030-12-13 | 30w | 0d |  |
| 33 | 4.7 | Comissioning | 12w | 2030-06-13 | 2030-09-05 | 32 | 2030-12-16 | 2031-03-18 | 12w | 0d |  |
| 34 | 4.8 | Energistaion | 4w | 2030-09-06 | 2030-10-03 | 33 | 2031-03-19 | 2031-04-15 | 4w | 0d |  |
