# 4E1-Group30

Schedule from MS Project, 2026-10-19 to 2031-01-20, status date 2026-11-11.

## Calendars

- ESB Office Calendar: Mon-Fri 08:00-12:00, 13:00-17:00; Sat-Sun off. Exceptions (off unless hours are given): 2026-10-26 to 2030-10-28 (October Bank Holiday, recurring), 2026-12-25 to 2030-12-25 (Christmas Day, recurring), 2026-12-26 to 2030-12-26 (St.Stephen's Day, recurring), 2026-12-27 to 2030-12-31 (Christmas Holidays, recurring), 2027-01-01 to 2031-01-01 (New Years Day, recurring), 2027-02-01 to 2031-02-01 (Imbolc / St.Bridget's Day, recurring), 2027-03-17 to 2031-03-17 (St Patrick's Day, recurring), 2027-03-29 (Easter Monday 2027), 2027-05-03 to 2030-05-06 (May Bank Holiday, recurring), 2027-06-07 to 2030-06-03 (June Bank Holiday, recurring), 2027-08-02 to 2030-08-05 (August Bank Holiday, recurring), 2028-04-17 (Easter Monday 2028), 2029-04-02 (Easter Monday 2029), 2030-04-22 (Easter Monday 2030).

## Schedule

| ID | WBS | Task | Type | Duration | Start | Finish | Predecessors | Baseline start | Baseline finish | Baseline duration | Total slack | Free slack |
| --- | --- | --- | --- | --- | --- | --- | --- | --- | --- | --- | --- | --- |
| 1 | 1 | **Planning Permission** |  | 320d | 2026-10-19 | 2028-02-04 |  | 2026-10-19 | 2028-02-04 | 320d | 0d |  |
| 2 | 1.1 | Layout Design |  | 10w | 2026-10-19 | 2027-01-05 |  | 2026-10-19 | 2027-01-05 | 10w | 0d |  |
| 3 | 1.2 | County Council Engagement |  | 6w | 2027-01-06 | 2027-02-17 | 2 | 2027-01-06 | 2027-02-17 | 6w | 0d |  |
| 4 | 1.3 | Site Investigation |  | 16w | 2027-02-18 | 2027-06-15 | 3 | 2027-02-18 | 2027-06-15 | 16w | 0d |  |
| 5 | 1.4 | Drainage Design |  | 4w | 2027-06-16 | 2027-07-13 | 4 | 2027-06-16 | 2027-07-13 | 4w | 0d |  |
| 6 | 1.5 | Site Assessments |  | 3w | 2027-06-16 | 2027-07-06 | 4 | 2027-06-16 | 2027-07-06 | 3w | 5d |  |
| 7 | 1.6 | Planning Pack Prep |  | 6w | 2027-07-14 | 2027-08-25 | 2, 5, 6 | 2027-07-14 | 2027-08-25 | 6w | 0d |  |
| 8 | 1.7 | Submit Planning | milestone | 0w | 2027-08-25 | 2027-08-25 | 7 | 2027-08-25 | 2027-08-25 | 0w | 0d |  |
| 9 | 1.8 | Grant of Planning |  | 22w | 2027-08-26 | 2028-02-04 | 8 | 2027-08-26 | 2028-02-04 | 22w | 0d |  |
| 10 | 2 | **Scoping & Costing** |  | 110d | 2028-02-07 | 2028-07-13 |  | 2028-02-07 | 2028-07-13 | 110d | 0d |  |
| 11 | 2.1 | Develop Project Scope |  | 10w | 2028-02-07 | 2028-04-18 | 9 | 2028-02-07 | 2028-04-18 | 10w | 0d |  |
| 12 | 2.2 | Complie Project Costs |  | 6w | 2028-04-19 | 2028-05-31 | 11 | 2028-04-19 | 2028-05-31 | 6w | 0d |  |
| 13 | 2.3 | Issue SOW and costs for approval | milestone | 0w | 2028-05-31 | 2028-05-31 | 12 | 2028-05-31 | 2028-05-31 | 0w | 0d |  |
| 14 | 2.4 | ESBN Board Approval |  | 6w | 2028-06-01 | 2028-07-13 | 9, 13 | 2028-06-01 | 2028-07-13 | 6w | 0d |  |
| 15 | 3 | **Tendering** |  | 175d | 2028-04-19 | 2029-01-02 |  | 2028-04-19 | 2029-01-02 | 175d | 0d |  |
| 16 | 3.1 | Update Required Specifications |  | 6w | 2028-04-19 | 2028-05-31 | 11 | 2028-04-19 | 2028-05-31 | 6w | 30d |  |
| 17 | 3.2 | Prepare Tender Documents |  | 4w | 2028-04-19 | 2028-05-17 | 11 | 2028-04-19 | 2028-05-17 | 4w | 40d |  |
| 18 | 3.3 | Issue Tender | milestone | 0w | 2028-07-13 | 2028-07-13 | 14, 16, 17 | 2028-07-13 | 2028-07-13 | 0w | 0d |  |
| 19 | 3.4 | Tender Response Period |  | 10w | 2028-07-14 | 2028-09-22 | 18 | 2028-07-14 | 2028-09-22 | 10w | 0d |  |
| 20 | 3.5 | Tender Assessment |  | 5w | 2028-09-25 | 2028-10-27 | 19 | 2028-09-25 | 2028-10-27 | 5w | 0d |  |
| 21 | 3.6 | Tender Award |  | 4w | 2028-10-31 | 2028-11-27 | 20 | 2028-10-31 | 2028-11-27 | 4w | 0d |  |
| 22 | 3.7 | Contract Commencement |  | 4w | 2028-11-28 | 2029-01-02 | 21 | 2028-11-28 | 2029-01-02 | 4w | 0d |  |
| 23 | 4 | **Construction** |  | 510d | 2029-01-03 | 2031-01-20 |  | 2029-01-03 | 2031-01-20 | 510d | 0d |  |
| 24 | 4.1 | Detailed Design |  | 8w | 2029-01-03 | 2029-02-28 | 22 | 2029-01-03 | 2029-02-28 | 8w | 30d | 0d |
| 25 | 4.2 | Material Order |  | 4w | 2029-01-03 | 2029-01-30 | 22 | 2029-01-03 | 2029-01-30 | 4w | 0d |  |
| 26 | 4.3 | Material Delivery |  | 52w | 2029-01-31 | 2030-02-15 | 25 | 2029-01-31 | 2030-02-15 | 52w | 0d |  |
| 27 | 4.4 | Site Set-Up |  | 4w | 2029-01-03 | 2029-01-30 | 22 | 2029-01-03 | 2029-01-30 | 4w | 50d | 20d |
| 28 | 4.5 | Civil Works |  | 42w | 2029-03-01 | 2030-01-03 | 24, 27 | 2029-03-01 | 2030-01-03 | 42w | 30d |  |
| 29 | 4.6 | Mechanical &Electrical Works |  | 30w | 2030-02-18 | 2030-09-19 | 26, 28 | 2030-02-18 | 2030-09-19 | 30w | 0d |  |
| 30 | 4.7 | Comissioning |  | 12w | 2030-09-20 | 2030-12-13 | 29 | 2030-09-20 | 2030-12-13 | 12w | 0d |  |
| 31 | 4.8 | Energistaion |  | 4w | 2030-12-16 | 2031-01-20 | 30 | 2030-12-16 | 2031-01-20 | 4w | 0d |  |
